# Assignment#3

Schedule from MS Project, 2021-03-22 to 2022-05-12.

## Calendars

- Standard: Mon-Fri 08:00-12:00, 13:00-17:00; Sat-Sun off.

## Resources

| Resource |
| --- |
| Project Manager2 |
| Project Manager3 |
| Requirement engineer7 |
| Requirement engineer8 |
| Requirement engineer9 |
| Requirement engineer10 |
| Requirement engineer13 |
| Requirement engineer14 |
| Requirement engineer15 |
| System engineer7 |
| System engineer8 |
| System engineer9 |
| System engineer11 |
| System engineer12 |
| System engineer13 |
| System engineer14 |
| System engineer15 |
| System engineer16 |
| Programmer7 |
| Programmer8 |
| Programmer12 |
| Programmer13 |
| Programmer22 |
| Programmer23 |
| Programmer24 |
| Programmer25 |
| Programmer26 |
| Programmer27 |
| Programmer28 |
| Programmer29 |
| Test Engineer7 |
| Test Engineer8 |
| Test Engineer44 |
| Test Engineer45 |
| Test Engineer46 |
| Test Engineer47 |
| Test Engineer48 |
| Test Engineer49 |
| Document Engineer7 |
| Document Engineer8 |
| Document Engineer13 |
| Document Engineer14 |
| Document Engineer43 |
| Document Engineer44 |
| Document Engineer45 |
| Document Engineer81 |
| Document Engineer82 |
| Document Engineer84 |
| Document Engineer85 |
| Document Engineer91 |
| Document Engineer379 |
| Document Engineer380 |
| Document Engineer381 |
| Document Engineer382 |
| Project Manager4 |
| Project Manager5 |
| Project Manager7 |
| Requirement engineer28 |
| Requirement engineer29 |
| Requirement engineer32 |
| System engineer30 |
| System engineer31 |
| System engineer32 |
| System engineer35 |
| System engineer379 |
| System engineer380 |
| System engineer381 |
| System engineer382 |
| Programmer58 |
| Programmer59 |
| Programmer65 |
| Programmer66 |
| Programmer379 |
| Programmer380 |
| Programmer381 |
| Test Engineer71 |
| Test Engineer72 |
| Test Engineer73 |
| Test Engineer74 |
| Test Engineer379 |
| Test Engineer380 |
| Test Engineer382 |
| Test Engineer384 |
| Test Engineer385 |
| Test Engineer386 |
| Test Engineer381 |

## Schedule

| ID | WBS | Task | Duration | Start | Finish | Predecessors | Total slack | Free slack | Constraint | Resources | Work | Amount of Work | Productivity |
| --- | --- | --- | --- | --- | --- | --- | --- | --- | --- | --- | --- | --- | --- |
| 1 | 1 | **Project Assignment 3** | 298.73d | 2021-03-22 | 2022-05-12 |  | 0d |  |  |  | 2303.12h |  |  |
| 2 | 1.1 | **Project Plan** | 12.77d | 2021-03-22 | 2021-04-07 |  | 0d |  |  |  | 326.32h |  |  |
| 3 | 1.1.1 | Write Plan | 4.91d | 2021-03-22 | 2021-03-26 |  | 0d |  | start no earlier than 2021-03-22 | Project Manager2 | 39.28h | 157 pages | 4 pages/Hour |
| 4 | 1.1.2 | **Review Plan** | 6.39d | 2021-03-26 | 2021-04-06 | 3 | 0d |  |  |  | 275.28h |  |  |
| 5 | 1.1.2.1 | Preparation for review | 3.93d | 2021-03-26 | 2021-04-01 | 3 | 0d |  |  | Document Engineer379; Programmer379; Requirement engineer15; System engineer379; Test Engineer379 | 157.2h | 157 pages | 5 pages/Hour |
| 6 | 1.1.2.2 | Review meeting | 2.46d | 2021-04-01 | 2021-04-06 | 5 | 0d |  |  | Document Engineer379; Programmer379; Project Manager2; Requirement engineer15; System engineer379; Test Engineer379 | 118.08h | 157 pages | 8 pages/Hour |
| 7 | 1.1.3 | Rework | 1.47d | 2021-04-06 | 2021-04-07 | 6 | 0d |  |  | Project Manager2 | 11.76h | 82 defects | 7 defects/Hour |
| 8 | 1.2 | **Documented Software Development Process Updates** | 6.53d | 2021-04-07 | 2021-04-16 | 7 | 0d |  |  |  | 209.04h |  |  |
| 9 | 1.2.1 | Process changes | 2d | 2021-04-07 | 2021-04-09 | 7 | 0d |  |  | Test Engineer379; Requirement engineer15; System engineer379 | 48h | 96 changes | 2 changes/Hour |
| 10 | 1.2.2 | **Review changes** | 3.6d | 2021-04-09 | 2021-04-15 | 9 | 0d |  |  |  | 153.6h |  |  |
| 11 | 1.2.2.1 | Preparation for review | 2.4d | 2021-04-09 | 2021-04-14 | 9 | 0d |  |  | Document Engineer380; Programmer379; Requirement engineer14; System engineer380; Test Engineer380 | 96h | 96 changes | 5 changes/Hour |
| 12 | 1.2.2.2 | Review Meeting | 1.2d | 2021-04-14 | 2021-04-15 | 11 | 0d |  |  | Document Engineer380; Programmer379; Requirement engineer14; System engineer380; Test Engineer380; Requirement engineer15 | 57.6h | 96 changes | 10 changes/Hour |
| 13 | 1.2.3 | Rework | 0.93d | 2021-04-15 | 2021-04-16 | 12 | 0d |  |  | Requirement engineer15 | 7.44h | 37 defects | 5 defects/Hour |
| 14 | 1.3 | **Requirement** | 18.98d | 2021-04-16 | 2021-05-13 | 13 | 0d |  |  |  | 874.08h |  |  |
| 15 | 1.3.1 | Write requirements | 1.86d | 2021-04-16 | 2021-04-20 | 13 | 0d |  |  | Requirement engineer13; Requirement engineer14; Requirement engineer15 | 44.56h | 178 requirements | 4 req/Hour |
| 16 | 1.3.2 | Write Use case Model | 8.38d | 2021-04-20 | 2021-04-30 | 15 | 0d |  |  | Requirement engineer13; Requirement engineer9; Requirement engineer10; Requirement engineer14; Requirement engineer15; Requirement engineer28; Requirement engineer29; Requirement engineer32 | 536h | 134 use cases | 1 usecase/4 Hours |
| 17 | 1.3.3 | **Review requirements** | 7.64d | 2021-04-30 | 2021-05-12 | 16 | 0d |  |  |  | 266.88h |  |  |
| 18 | 1.3.3.1 | Preparation for review | 4.84d | 2021-04-30 | 2021-05-07 | 16 | 0d |  |  | Document Engineer379; Programmer379; System engineer379; Test Engineer379 | 154.88h | 178 requirements | 15 req/Hour |
| 19 | 1.3.3.2 | Review Meeting | 2.8d | 2021-05-07 | 2021-05-12 | 18 | 0d |  |  | Document Engineer379; Programmer379; Requirement engineer13; System engineer379; Test Engineer379 | 112h | 178 requirements | 20 req/Hour |
| 20 | 1.3.4 | Rework | 1.11d | 2021-05-12 | 2021-05-13 | 19 | 0d |  |  | Requirement engineer13; Requirement engineer14; Requirement engineer15 | 26.64h | 133 defects | 5 defects/Hours |
| 21 | 1.4 | **Build the development and testing lab environment** | 9.95d | 2021-04-07 | 2021-04-21 | 7 | 23.23d |  |  |  | 223.2h |  |  |
| 22 | 1.4.1 | **Hardware Environemnt** | 5.7d | 2021-04-07 | 2021-04-15 | 7 | 23.23d |  |  |  | 139.2h |  |  |
| 23 | 1.4.1.1 | Servers | 3d | 2021-04-07 | 2021-04-12 | 7 | 25.8d | 0d |  | System engineer381; System engineer382; System engineer32; System engineer35 | 96h | 12 | 1 server/day |
| 24 | 1.4.1.2 | Clients | 2.7d | 2021-04-12 | 2021-04-15 | 23 | 25.8d | 0d |  | System engineer32; System engineer35 | 43.2h | 27 | 5 clients/day |

| ID | WBS | Task | Duration | Start | Finish | Predecessors | Total slack | Free slack | Resources | Work | Productivity | Amount of Work |
| --- | --- | --- | --- | --- | --- | --- | --- | --- | --- | --- | --- | --- |
| 25 | 1.4.2 | **Software Development Tools** | 1d | 2021-04-15 | 2021-04-16 | 24 | 23.23d |  |  | 8h |  |  |
| 26 | 1.4.2.1 | Build/compile tools | 1d | 2021-04-15 | 2021-04-16 | 24 | 25.8d | 0d | System engineer32 | 8h | 1 tool/Hour |  |
| 27 | 1.4.3 | **Software Testing Tools** | 3.25d | 2021-04-16 | 2021-04-21 | 26 | 23.23d |  |  | 76h |  |  |
| 28 | 1.4.3.1 | Test cases execution tools | 1.75d | 2021-04-16 | 2021-04-20 | 26 | 25.8d | 0d | System engineer32; System engineer35 | 28h | 2 tool/day |  |
| 29 | 1.4.3.2 | simulation tools | 1.5d | 2021-04-20 | 2021-04-21 | 28 | 25.8d |  | System engineer381; System engineer32; System engineer35; System engineer382 | 48h | 2 tool/day | 12 |
| 30 | 1.5 | **Analysis** | 7.67d | 2021-05-13 | 2021-05-24 | 20 | 0d |  |  | 217.92h |  |  |
| 31 | 1.5.1 | Write Analysis Document | 1.7d | 2021-05-13 | 2021-05-14 | 20 | 0d |  | System engineer379; System engineer380 | 27.2h | 5 pages/Hour | 136 pages |
| 32 | 1.5.2 | **Review Analysis Document** | 5.1d | 2021-05-14 | 2021-05-24 | 31 | 0d |  |  | 176.8h |  |  |
| 33 | 1.5.2.1 | Preparation for Analysis Document | 3.4d | 2021-05-14 | 2021-05-20 | 31 | 0d |  | Document Engineer379; Programmer379; Requirement engineer15; Test Engineer379 | 108.8h | 5 pages/Hour | 136 pages |
| 34 | 1.5.2.2 | Review Meeting | 1.7d | 2021-05-20 | 2021-05-24 | 33 | 0d |  | Document Engineer379; Programmer379; Requirement engineer15; System engineer379; Test Engineer379 | 68h | 10 pages/Hour | 136 pages |
| 35 | 1.5.3 | Rework | 0.87d | 2021-05-24 | 2021-05-24 | 34 | 0d |  | System engineer379; System engineer380 | 13.92h | 7 defects/Hour | 97 defects |
| 36 | 1.6 | **Design** | 15.45d | 2021-05-24 | 2021-06-15 | 35, 29 | 0d |  |  | 452.56h |  |  |
| 37 | 1.6.1 | Write DD | 2.27d | 2021-05-24 | 2021-05-27 | 35, 29 | 0d |  | System engineer31; System engineer16; System engineer30 | 54.4h | 3 pages/ Hour | 163 pages |
| 38 | 1.6.2 | **Review DD** | 6.35d | 2021-05-27 | 2021-06-04 | 37 | 0d |  |  | 221.36h |  |  |
| 39 | 1.6.2.1 | Preparation for DD | 4.08d | 2021-05-27 | 2021-06-02 | 37 | 0d |  | Document Engineer379; Programmer379; Requirement engineer15; Test Engineer379 | 130.56h | 5 pages/Hour | 163 pages |
| 40 | 1.6.2.2 | Review Meeting | 2.27d | 2021-06-02 | 2021-06-04 | 39 | 0d |  | Document Engineer379; Programmer379; Requirement engineer15; System engineer31; Test Engineer379 | 90.8h | 9 pages/Hour | 163 pages |
| 41 | 1.6.3 | Rework | 1.62d | 2021-06-04 | 2021-06-08 | 40 | 0d |  | System engineer30; System engineer16; System engineer31 | 38.8h | 5 defects/Hour | 194 defects |
| 42 | 1.6.4 | Write Data model | 1.88d | 2021-06-08 | 2021-06-10 | 41 | 0d |  | System engineer16; System engineer30; System engineer31 | 45.04h | 1 pages/Hour | 45 pages |
| 43 | 1.6.5 | **Review DM** | 2.12d | 2021-06-10 | 2021-06-14 | 42 | 0d |  |  | 73.52h |  |  |
| 44 | 1.6.5.1 | Preparation for DM | 1.41d | 2021-06-10 | 2021-06-11 | 42 | 0d |  | Document Engineer379; Programmer379; Requirement engineer15; Test Engineer379 | 45.12h | 4 pages/Hour | 45 pages |
| 45 | 1.6.5.2 | Review Meeting | 0.71d | 2021-06-11 | 2021-06-14 | 44 | 0d |  | Document Engineer379; Programmer379; Requirement engineer15; System engineer31; Test Engineer379 | 28.4h | 8 pages/Hour | 45 pages |
| 46 | 1.6.6 | Rework | 1.22d | 2021-06-14 | 2021-06-15 | 45 | 0d |  | System engineer30; System engineer31 | 19.44h | 5 defects/Hour | 97 defects |
| 47 | 1.7 | **Coding** | 170.73d | 2021-06-15 | 2022-02-09 | 46 | 0d |  |  |  |  |  |
| 48 | 1.7.1 | Write code | 99.68d | 2021-06-15 | 2021-11-02 | 46 | 0d |  |  |  | 5 SLOC/Hour | 3987 SLOC |

| ID | WBS | Task | Duration | Start | Finish | Predecessors | Total slack | Amount of Work | Productivity |
| --- | --- | --- | --- | --- | --- | --- | --- | --- | --- |
| 49 | 1.7.2 | **Unit testing** | 59.12d | 2021-11-02 | 2022-01-24 | 48 | 0d |  |  |
| 50 | 1.7.2.1 | Prepare/Execute test cases | 25.69d | 2021-11-02 | 2021-12-07 | 48 | 0d | 411 test cases | 2 test cases/Hour |
| 51 | 1.7.2.2 | Fix found defects | 21.43d | 2021-12-07 | 2022-01-06 | 50 | 0d | 300 defects | 14 defects/Day |
| 52 | 1.7.2.3 | Test fixed defects | 12d | 2022-01-06 | 2022-01-24 | 51 | 0d | 300 defects | 25 defects/Day |
| 53 | 1.7.3 | **Code inspection** | 11.93d | 2022-01-24 | 2022-02-09 | 52 | 0d |  |  |
| 54 | 1.7.3.1 | Preparation for code inspection | 3.33d | 2022-01-24 | 2022-01-27 | 52 | 0d | 3987 SLOC | 150 SLOC/Hour |
| 55 | 1.7.3.2 | code inspection meeting | 2.5d | 2022-01-27 | 2022-02-01 | 54 | 0d | 3987 SLOC | 200 SLOC/Hour |
| 56 | 1.7.3.3 | Rework | 6.1d | 2022-02-01 | 2022-02-09 | 55 | 0d | 244 defects | 5 defects/Hour |
| 57 | 1.8 | **Testing** | 55.08d | 2022-02-09 | 2022-04-27 | 20, 56 | 0d |  |  |
| 58 | 1.8.1 | Write test plan | 17.3d | 2022-02-09 | 2022-03-04 | 20 | 0d | 173 pages | 10 pages/Day |
| 59 | 1.8.2 | **Review TP** | 10.03d | 2022-03-04 | 2022-03-18 | 58 | 0d |  |  |
| 60 | 1.8.2.1 | Preparation for TP | 5.41d | 2022-03-04 | 2022-03-11 | 58 | 0d | 173 pages | 4 pages/Hour |
| 61 | 1.8.2.2 | Review TP meeting | 2.17d | 2022-03-11 | 2022-03-16 | 60 | 0d | 173 pages | 10 pages/Hour |
| 62 | 1.8.2.3 | Rework | 2.45d | 2022-03-16 | 2022-03-18 | 61 | 0d | 98 defects | 5 defects/Hour |
| 63 | 1.8.3 | Execute TP (test cases) | 15.75d | 2022-03-18 | 2022-04-11 | 56, 62 | 0d | 189 test cases | 12 test cases/day |
| 64 | 1.8.4 | Fix found defects | 7.2d | 2022-04-11 | 2022-04-20 | 63 | 0d | 72 defects | 10 defects/day |
| 65 | 1.8.5 | Test fixed defects | 4.8d | 2022-04-20 | 2022-04-27 | 64 | 0d | 72 defects | 15 defetcs/day |
| 66 | 1.9 | **Documentation** | 11.52d | 2022-04-27 | 2022-05-12 | 20, 65 | 0d |  |  |
| 67 | 1.9.1 | User documentation | 5d | 2022-04-27 | 2022-05-04 | 20, 65 | 0d | 160 pages | 4 pages/Hour |
| 68 | 1.9.2 | **Review UD** | 6.52d | 2022-05-04 | 2022-05-12 | 67 | 0d |  |  |
| 69 | 1.9.2.1 | Preparation for UD Review | 2.86d | 2022-05-04 | 2022-05-09 | 67 | 0d | 160 pages | 7 pages/Hour |
| 70 | 1.9.2.2 | Review UD Meeting | 2.23d | 2022-05-09 | 2022-05-11 | 69 | 0d | 160 pages | 9 pages/Hour |
| 71 | 1.9.2.3 | Rework | 1.43d | 2022-05-11 | 2022-05-12 | 70 | 0d | 194 defects | 17 defects/Hour |
